# 进度安排

Schedule from MS Project, 2009-09-21 to 2009-11-30, A marks actual dates.
asiainfo

## Calendars

- 标准: Mon-Fri 08:00-12:00, 13:00-17:00; Sat-Sun off. Exceptions (off unless hours are given): 2009-09-26 to 2009-09-27 08:00-12:00, 13:00-17:00, 2009-10-01 to 2009-10-04 08:00-12:00, 13:00-17:00, 2009-10-10 to 2009-10-11 08:00-12:00, 13:00-17:00, 2009-10-17 to 2009-10-18 08:00-12:00, 13:00-17:00, 2009-10-24 to 2009-10-25 08:00-12:00, 13:00-17:00, 2009-10-31 to 2009-11-01 08:00-12:00, 13:00-17:00, 2009-11-07 to 2009-11-08 08:00-12:00, 13:00-17:00, 2009-11-14 to 2009-11-15 08:00-12:00, 13:00-17:00, 2009-11-22 08:00-12:00, 13:00-17:00, 2009-11-28 to 2009-11-29 08:00-12:00, 13:00-17:00.

## Resources

| Resource |
| --- |
| 李海武 |
| 卢菊平 |

## Schedule

| ID | WBS | Task | Duration | Start | Finish | Predecessors | Complete | Remaining | Total slack | Free slack | Constraint | Resources | Work | Actual work | Text1 |
| --- | --- | --- | --- | --- | --- | --- | --- | --- | --- | --- | --- | --- | --- | --- | --- |
| 1 | 1 | **公告栏** | 2d? | 2009-09-21 A | 2009-09-22 A |  | 100% |  |  |  |  |  | 16h | 16h |  |
| 2 | 1.1 | 公告发布,公告显示 | 1d? | 2009-09-21 A | 2009-09-21 A |  | 100% |  |  |  |  | 李海武 | 8h | 8h | 已经完成 |
| 3 | 1.2 | 公告管理 | 1d? | 2009-09-22 A | 2009-09-22 A |  | 100% |  |  |  | start no earlier than 2009-09-22 | 李海武 | 8h | 8h | 已经完成 |
| 4 | 2 | **留言板** | 2d? | 2009-09-23 A | 2009-09-24 A |  | 100% |  |  |  |  |  | 16h | 16h |  |
| 5 | 2.1 | 个人留言/查看留言/删除留言 | 1d? | 2009-09-23 A | 2009-09-23 A |  | 100% |  |  |  | start no earlier than 2009-09-23 | 李海武 | 8h | 8h | 已经完成 |
| 6 | 2.2 | 管理员查看/删除留言 | 1d? | 2009-09-24 A | 2009-09-24 A | 5 | 100% |  |  |  | start no earlier than 2009-09-24 | 李海武 | 8h | 8h | 已经完成 |
| 7 | 3 | **个人信息管理** | 8d? | 2009-09-25 A | 2009-10-02 | 6 | 80% | 1.6d? | 58d |  |  |  | 80h | 64h |  |
| 8 | 3.1 | 基本信息管理 | 1d? | 2009-09-25 A | 2009-09-25 A |  | 100% |  |  |  | start no earlier than 2009-09-25 | 李海武 | 8h | 8h | 已经完成 |
| 9 | 3.2 | 基本信息后台管理 | 2d | 2009-09-26 A | 2009-09-27 A | 8 | 100% |  |  |  | start no earlier than 2009-09-25 | 卢菊平 | 16h | 16h | 已经完成 |
| 10 | 3.3 | 修改密码 | 1d? | 2009-09-26 A | 2009-09-26 A | 9 | 100% |  |  |  | start no earlier than 2009-09-26 | 李海武 | 8h | 8h | 已经完成 |
| 11 | 3.4 | 虚拟房间设置 | 4d | 2009-09-27 A | 2009-09-30 A | 10 | 100% |  |  |  | start no earlier than 2009-09-27 | 李海武 | 32h | 32h | 已经完成 |
| 12 | 3.5 | 虚拟房间后台管理 | 2d | 2009-10-01 | 2009-10-02 | 11 |  |  | 58d |  | start no earlier than 2009-09-27 | 卢菊平 | 16h |  |  |
| 13 | 4 | **会议预约** | 7d? | 2009-10-01 | 2009-10-07 |  |  |  | 53d |  |  |  | 56h |  |  |
| 14 | 4.1 | 预约会议 | 3d | 2009-10-01 | 2009-10-03 |  |  |  | 53d | 0d | start no earlier than 2009-10-01 | 李海武 | 24h |  |  |
| 15 | 4.2 | 变更预约申请 | 2d? | 2009-10-04 | 2009-10-05 | 14 |  |  | 53d | 0d | finish no earlier than 2009-10-05 | 李海武 | 16h |  |  |
| 16 | 4.3 | 会议审批列表 | 2d? | 2009-10-06 | 2009-10-07 | 15 |  |  | 53d |  | start no earlier than 2009-10-06 | 卢菊平 | 16h |  |  |
| 17 | 5 | **资源管理** | 20d? | 2009-09-29 A | 2009-10-18 |  | 13% | 17.33d? | 42d |  |  |  | 120h | 16h |  |
| 18 | 5.1 | 会议模板 | 2d | 2009-09-29 A | 2009-09-30 A |  | 100% |  |  |  | start no earlier than 2009-09-29 | 卢菊平 | 16h | 16h | 已经完成 |
| 19 | 5.2 | 资源占用情况 | 3d? | 2009-10-06 | 2009-10-08 |  |  |  | 42d | 0d | start no earlier than 2009-10-06 | 李海武 | 24h |  |  |
| 20 | 5.3 | 可用资源 | 3d? | 2009-10-09 | 2009-10-11 | 19 |  |  | 42d | 0d | start no earlier than 2009-10-09 | 李海武 | 24h |  |  |
| 21 | 5.4 | 正在召开的会议 | 2d | 2009-10-12 | 2009-10-13 | 20 |  |  | 42d | 0d | start no earlier than 2009-10-12 | 李海武 | 16h |  |  |
| 22 | 5.5 | 当日会议安排 | 2d | 2009-10-14 | 2009-10-15 | 21 |  |  | 42d | 0d | start no earlier than 2009-10-14 | 李海武 | 16h |  |  |
| 23 | 5.6 | 本周会议安排 | 1d? | 2009-10-16 | 2009-10-16 | 22 |  |  | 42d | 0d | start no earlier than 2009-10-16 | 卢菊平 | 8h |  |  |
| 24 | 5.7 | 本月会议安排 | 1d? | 2009-10-17 | 2009-10-17 | 23 |  |  | 42d | 0d | start no earlier than 2009-10-17 | 卢菊平 | 8h |  |  |
| 25 | 5.8 | 所有会议安排 | 1d | 2009-10-18 | 2009-10-18 | 24 |  |  | 42d |  | start no earlier than 2009-10-18 | 卢菊平 | 8h |  |  |

| ID | WBS | Task | Duration | Start | Finish | Predecessors | Total slack | Free slack | Constraint | Resources | Work |
| --- | --- | --- | --- | --- | --- | --- | --- | --- | --- | --- | --- |
| 26 | 6 | **统计分析** | 4d | 2009-10-16 | 2009-10-19 |  | 36d |  |  |  | 32h |
| 27 | 6.1 | 用户使用次数排行 | 2d | 2009-10-16 | 2009-10-17 |  | 36d | 0d | start no earlier than 2009-10-16 | 李海武 | 16h |
| 28 | 6.2 | 用户会议召开次数排行 | 1d | 2009-10-18 | 2009-10-18 | 27 | 36d | 0d | start no earlier than 2009-10-18 | 卢菊平 | 8h |
| 29 | 6.3 | 用户单日会议召开次数排行 | 1d | 2009-10-19 | 2009-10-19 | 28 | 36d | 0d | start no earlier than 2009-10-19 | 卢菊平 | 8h |
| 30 | 7 | **日志管理** | 2d? | 2009-10-20 | 2009-10-21 |  | 36d |  |  |  | 16h |
| 31 | 7.1 | 日志记录 | 1d? | 2009-10-20 | 2009-10-20 | 29 | 36d | 0d | start no earlier than 2009-10-20 | 李海武 | 8h |
| 32 | 7.2 | 日志查询 | 1d? | 2009-10-21 | 2009-10-21 | 31 | 36d | 0d | start no earlier than 2009-09-26 | 李海武 | 8h |
| 33 | 8 | 外部系统 | 3d? | 2009-10-22 | 2009-10-24 | 32 | 36d |  | start no earlier than 2009-10-22 | 李海武 | 24h |
| 34 | 9 | 系统测试 | 7d? | 2009-10-20 | 2009-10-26 | 33 | 30d |  | start no earlier than 2009-10-20 | 卢菊平 | 56h |
| 35 | 10 | 文档编写 | 4d | 2009-11-27 | 2009-11-30 | 34 | 0d |  | start no earlier than 2009-11-27 | 卢菊平 | 32h |
