# 进度安排

Schedule from MS Project, 2009-09-21 to 2009-11-03, A marks actual dates.
asiainfo

## Calendars

- 标准: Mon-Fri 08:00-12:00, 13:00-17:00; Sat-Sun off. Exceptions (off unless hours are given): 2009-09-26 to 2009-09-27 08:00-12:00, 13:00-17:00, 2009-10-01 to 2009-10-04 08:00-12:00, 13:00-17:00, 2009-10-10 to 2009-10-11 08:00-12:00, 13:00-17:00, 2009-10-17 to 2009-10-18 08:00-12:00, 13:00-17:00, 2009-10-24 to 2009-10-25 08:00-12:00, 13:00-17:00, 2009-10-31 to 2009-11-01 08:00-12:00, 13:00-17:00.

## Resources

| Resource |
| --- |
| 李海武 |
| 卢菊平 |

## Schedule

| ID | WBS | Task | Duration | Start | Finish | Predecessors | Complete | Remaining | Total slack | Free slack | Constraint | Resources | Work | Actual work | Text1 |
| --- | --- | --- | --- | --- | --- | --- | --- | --- | --- | --- | --- | --- | --- | --- | --- |
| 1 | 1 | **公告栏** | 2d? | 2009-09-21 A | 2009-09-22 A |  | 100% |  |  |  |  |  | 16h | 16h |  |
| 2 | 1.1 | 公告发布,公告显示 | 1d? | 2009-09-21 A | 2009-09-21 A |  | 100% |  |  |  |  | 李海武 | 8h | 8h | 已经完成 |
| 3 | 1.2 | 公告管理 | 1d? | 2009-09-22 A | 2009-09-22 A |  | 100% |  |  |  | start no earlier than 2009-09-22 | 李海武 | 8h | 8h | 已经完成 |
| 4 | 2 | **留言板** | 2d? | 2009-09-23 A | 2009-09-24 A |  | 100% |  |  |  |  |  | 16h | 16h |  |
| 5 | 2.1 | 个人留言/查看留言/删除留言 | 1d? | 2009-09-23 A | 2009-09-23 A |  | 100% |  |  |  | start no earlier than 2009-09-23 | 李海武 | 8h | 8h | 已经完成 |
| 6 | 2.2 | 管理员查看/删除留言 | 1d? | 2009-09-24 A | 2009-09-24 A | 5 | 100% |  |  |  | start no earlier than 2009-09-24 | 李海武 | 8h | 8h | 已经完成 |
| 7 | 3 | **基本信息** | 10d? | 2009-09-25 A | 2009-10-04 A | 6 | 100% |  |  |  |  |  | 96h | 96h |  |
| 8 | 3.1 | 个人设置 | 1d? | 2009-09-25 A | 2009-09-25 A |  | 100% |  |  |  | start no earlier than 2009-09-25 | 李海武 | 8h | 8h | 已经完成 |
| 9 | 3.2 | 基本信息后台管理 | 2d | 2009-09-26 A | 2009-09-27 A | 8 | 100% |  |  |  | start no earlier than 2009-09-25 | 卢菊平 | 16h | 16h | 已经完成 |
| 10 | 3.3 | 修改密码 | 1d? | 2009-09-26 A | 2009-09-26 A | 9 | 100% |  |  |  | start no earlier than 2009-09-26 | 李海武 | 8h | 8h | 已经完成 |
| 11 | 3.4 | 虚拟房间设置 | 4d | 2009-09-27 A | 2009-09-30 A | 10 | 100% |  |  |  | start no earlier than 2009-09-27 | 李海武 | 32h | 32h | 已经完成 |
| 12 | 3.5 | 虚拟房间后台管理 | 2d | 2009-10-01 A | 2009-10-02 A | 11 | 100% |  |  |  | start no earlier than 2009-09-27 | 卢菊平 | 16h | 16h | 已经完成 |
| 13 | 3.6 | 终端列表 | 1d | 2009-10-03 A | 2009-10-03 A | 12 | 100% |  |  |  | start no earlier than 2009-09-27 | 卢菊平 | 8h | 8h | 已经完成 |
| 14 | 3.7 | 参会单位 | 1d | 2009-10-04 A | 2009-10-04 A | 13 | 100% |  |  |  | start no earlier than 2009-09-27 | 卢菊平 | 8h | 8h | 已经完成 |
| 15 | 4 | **系统资源** | 14d | 2009-09-29 A | 2009-10-12 |  | 66% | 4.8d | 0d |  |  |  | 56h | 36.8h |  |
| 16 | 4.1 | 会议模板 | 2d | 2009-09-29 A | 2009-09-30 A |  | 100% |  |  |  | start no earlier than 2009-09-29 | 卢菊平 | 16h | 16h | 已经完成 |
| 17 | 4.2 | 资源查询API | 1d | 2009-10-06 A | 2009-10-06 A |  | 100% |  |  |  | start no earlier than 2009-10-06 | 卢菊平 | 8h | 8h | 已经完成 |
| 18 | 4.3 | 资源占用情况 | 2d | 2009-10-09 | 2009-10-10 | 26 |  |  | 1.6d | 0d | start no earlier than 2009-10-06 | 李海武 | 16h |  |  |
| 19 | 4.4 | 可用资源 | 2d | 2009-10-11 A | 2009-10-12 | 18 | 80% | 0.4d | 0d |  | start no earlier than 2009-10-09 | 李海武 | 16h | 12.8h | 完成大部分功能,还有翻页及校验未完成 |
| 20 | 5 | **会议管理** | 19d | 2009-10-01 A | 2009-10-19 |  | 59% | 7.82d | 14d |  |  |  | 136h | 80h |  |
| 21 | 5.1 | 预约会议 | 3d | 2009-10-01 A | 2009-10-03 A | 11 | 100% |  |  |  | start no earlier than 2009-10-01 | 李海武 | 24h | 24h | 已经完成 |
| 22 | 5.2 | 预约管理 | 2d | 2009-10-06 A | 2009-10-07 A | 21 | 100% |  |  |  | start no earlier than 2009-10-06 | 李海武 | 16h | 16h | 已经完成 |
| 23 | 5.3 | 预约修改,查看,查询 | 1d | 2009-10-05 A | 2009-10-05 A | 14 | 100% |  |  |  | start no earlier than 2009-10-01 | 卢菊平 | 8h | 8h | 已经完成 |
| 24 | 5.4 | 预约后台 | 2d | 2009-10-06 A | 2009-10-07 A | 23 | 100% |  |  |  | start no earlier than 2009-10-06 | 卢菊平 | 16h | 16h | 已经完成 |
| 25 | 5.5 | 预约虚拟房间加载 | 1d | 2009-10-08 A | 2009-10-08 A | 24 | 100% |  |  |  | start no earlier than 2009-10-01 | 卢菊平 | 8h | 8h | 已经完成 |
| 26 | 5.6 | 平台消息监听更新会议状态 | 1d | 2009-10-08 A | 2009-10-08 A | 22 | 100% |  |  |  | start no earlier than 2009-10-08 | 李海武 | 8h | 8h | 已经完成 |
| 27 | 5.7 | 正在召开的会议 | 2d | 2009-10-13 | 2009-10-14 | 19 |  |  | 0d |  | start no earlier than 2009-10-12 | 李海武 | 16h |  |  |
| 28 | 5.8 | 当日会议安排 | 2d | 2009-10-15 | 2009-10-16 | 27 |  |  | 0d |  | start no earlier than 2009-10-14 | 李海武 | 16h |  |  |
| 29 | 5.9 | 本周会议安排 | 1d | 2009-10-17 | 2009-10-17 | 28 |  |  | 15d | 0d | start no earlier than 2009-10-16 | 卢菊平 | 8h |  |  |
| 30 | 5.10 | 本月会议安排 | 1d | 2009-10-18 | 2009-10-18 | 29 |  |  | 15d | 0d | start no earlier than 2009-10-17 | 卢菊平 | 8h |  |  |
| 31 | 5.11 | 所有会议安排 | 1d | 2009-10-19 | 2009-10-19 | 30 |  |  | 11d |  | start no earlier than 2009-10-18 | 卢菊平 | 8h |  |  |

| ID | WBS | Task | Duration | Start | Finish | Predecessors | Total slack | Constraint | Resources | Work |
| --- | --- | --- | --- | --- | --- | --- | --- | --- | --- | --- |
| 32 | 6 | **统计分析** | 4d | 2009-10-17 | 2009-10-20 |  | 0d |  |  | 32h |
| 33 | 6.1 | 用户使用次数排行 | 2d | 2009-10-17 | 2009-10-18 | 28 | 0d | start no earlier than 2009-10-16 | 李海武 | 16h |
| 34 | 6.2 | 用户会议召开次数排行 | 1d | 2009-10-19 | 2009-10-19 | 33 | 0d | start no earlier than 2009-10-18 | 卢菊平 | 8h |
| 35 | 6.3 | 用户单日会议召开次数排行 | 1d | 2009-10-20 | 2009-10-20 | 34 | 0d | start no earlier than 2009-10-19 | 卢菊平 | 8h |
| 36 | 7 | **日志管理** | 2d | 2009-10-19 | 2009-10-20 |  | 0d |  |  | 16h |
| 37 | 7.1 | 日志记录 | 1d | 2009-10-19 | 2009-10-19 | 33 | 0d | start no earlier than 2009-10-19 | 李海武 | 8h |
| 38 | 7.2 | 日志查询 | 1d | 2009-10-20 | 2009-10-20 | 37 | 0d | start no earlier than 2009-09-26 | 李海武 | 8h |
| 39 | 8 | 界面调整和美化 | 7d | 2009-10-21 | 2009-10-27 | 38 | 0d | start no earlier than 2009-09-21 | 李海武 | 56h |
| 40 | 9 | 手机短信 | 7d | 2009-10-28 | 2009-11-03 | 39 | 0d | start no earlier than 2009-10-21 | 李海武 | 56h |
| 41 | 10 | 外部系统 | 3d | 2009-10-21 | 2009-10-23 | 35, 38 | 0d | start no earlier than 2009-10-21 | 卢菊平 | 24h |
| 42 | 11 | 系统测试,BUG修改,功能完善 | 7d | 2009-10-24 | 2009-10-30 | 41 | 0d | start no earlier than 2009-10-20 | 卢菊平 | 56h |
| 43 | 12 | 文档编写 | 4d | 2009-10-31 | 2009-11-03 | 42 | 0d | start no earlier than 2009-10-27 | 卢菊平 | 32h |
